# Mega Truck Consolidated

Schedule from MS Project, 2019-01-28 to 2019-05-30.

## Calendars

- Standard: Mon-Fri 08:00-12:00, 13:00-17:00; Sat-Sun off.

## Resources

| Resource |
| --- |
| Scott Seely |
| Jeff Pike |
| Annette Hill |
| Brad Sutton |
| Judy Lew |
| Ryan Ihrig |
| Bottled water |
| Yan Li |
| Brenda Diaz |
| Survey Team Member |
| Food |
| Jamie Reding |
| Travel |
| David Barber |
| Eva Corets |
| Bjorn Rettig |
| Greg Guzik |
| Maria Hammond |
| Model technician |
| Frank Zhang |
| Jane Clayton |
| Jim Kim |
| Testing Field |
| Large Conference Room |

## Schedule

| ID | WBS | Task | Type | Duration | Start | Finish | Predecessors | Total slack | Resources | Work |
| --- | --- | --- | --- | --- | --- | --- | --- | --- | --- | --- |
| 1 | 1 | **Target Market Research and Analysis** |  | 27.57d | 2019-01-28 | 2019-03-06 |  | 0d |  | 677.78h |
| 2 | 1.1 | **Research** |  | 23.62d | 2019-01-28 | 2019-02-28 |  | 0d |  | 425.18h |
| 3 | 1.1.1 | Research begins | milestone | 0d | 2019-01-28 | 2019-01-28 |  | 0d |  |  |
| 4 | 1.1.2 | **Surveys** |  | 7.99d | 2019-01-28 | 2019-02-06 |  | 0d |  | 130.98h |
| 5 | 1.1.2.1 | Develop survey questionnaire |  | 1.87d | 2019-01-28 | 2019-01-29 | 3 | 0d | Scott Seely; Jeff Pike; Annette Hill [50%]; Brad Sutton | 48h |
| 6 | 1.1.2.2 | Review and approval of survey |  | 1h | 2019-01-29 | 2019-01-29 | 5 | 0d | Jeff Pike | 1h |
| 7 | 1.1.2.3 | Conduct survey |  | 1.2w | 2019-01-29 | 2019-02-06 | 6 | 80.08d | Judy Lew [57.1%]; Scott Seely [57.1%]; Annette Hill [28.6%]; Ryan Ihrig [57.1%]; Bottled water [200%] | 81.98h |
| 8 | 1.1.3 | **Focus Groups** |  | 11d | 2019-01-29 | 2019-02-13 |  | 0d |  | 164.05h |
| 9 | 1.1.3.1 | Identify focus group member demographics |  | 1d | 2019-01-29 | 2019-01-30 | 6 | 0d | Jeff Pike; Yan Li; Brenda Diaz | 24h |
| 10 | 1.1.3.2 | Contact potential focus group members |  | 5d | 2019-01-30 | 2019-02-06 | 9 | 0d | Survey Team Member; Brad Sutton | 80h |
| 11 | 1.1.3.3 | Conduct focus groups |  | 1w | 2019-02-06 | 2019-02-13 | 10 | 0d | Food [0.1%]; Judy Lew; Annette Hill [50%] | 60.05h |
| 12 | 1.1.4 | **Observations** |  | 10.62d | 2019-02-13 | 2019-02-28 |  | 0d |  | 130.15h |
| 13 | 1.1.4.1 | Identify observation parameters |  | 4h | 2019-02-13 | 2019-02-14 | 11 | 0d | Brenda Diaz; Brad Sutton | 8h |
| 14 | 1.1.4.2 | Select observation locations |  | 1h | 2019-02-14 | 2019-02-14 | 13 | 0d | Brad Sutton; Brenda Diaz | 2h |
| 15 | 1.1.4.3 | Conduct observations |  | 2w | 2019-02-14 | 2019-02-28 | 14 | 0d | Food [0.1%]; Jamie Reding [50%]; Jeff Pike [50%]; Judy Lew [50%]; Travel [0.2%] | 120.15h |
| 16 | 1.1.5 | Research complete | milestone | 0d | 2019-02-28 | 2019-02-28 | 15 | 64.45d |  |  |
| 17 | 1.2 | **Analysis** |  | 13.95d | 2019-02-14 | 2019-03-06 |  | 0d |  | 252.6h |
| 18 | 1.2.1 | Analysis begins | milestone | 0d | 2019-02-14 | 2019-02-14 | 15SS | 0d |  |  |
| 19 | 1.2.2 | **Analysis of Research Data** |  | 7.95d | 2019-02-14 | 2019-02-26 |  | 0d |  | 162.6h |
| 20 | 1.2.2.1 | Analyze surveys, focus groups, and observations |  | 1.95d | 2019-02-14 | 2019-02-18 | 18 | 0d | Jamie Reding; David Barber; Scott Seely; Ryan Ihrig | 54.6h |
| 21 | 1.2.2.2 | Create follow up actions for secondary research |  | 1d | 2019-02-18 | 2019-02-19 | 20 | 0d | Annette Hill [50%]; Brenda Diaz; Brad Sutton; Eva Corets | 28h |
| 22 | 1.2.2.3 | Conduct secondary research |  | 1w | 2019-02-19 | 2019-02-26 | 21 | 0d | Jeff Pike; Judy Lew | 80h |
| 23 | 1.2.3 | **Report of Research Findings** |  | 7d | 2019-02-25 | 2019-03-06 |  | 0d |  | 90h |
| 24 | 1.2.3.1 | Compile draft copy of report |  | 8h | 2019-02-25 | 2019-02-26 | 22FF | 0d | Brenda Diaz | 8h |
| 25 | 1.2.3.2 | Draft copy review period |  | 5d | 2019-02-26 | 2019-03-05 | 24 | 0d | Bjorn Rettig [50%]; Brad Sutton [75%] | 50h |
| 26 | 1.2.3.3 | Review comments and compile final report |  | 1d | 2019-03-05 | 2019-03-06 | 25 | 0d | Brenda Diaz; David Barber; Jamie Reding; Greg Guzik | 32h |
| 27 | 1.2.4 | Analysis complete | milestone | 0d | 2019-03-06 | 2019-03-06 | 26 | 0d |  |  |

Notes:
- 7: Contact Mark Hanson in Marketing for additional resource support.

| ID | WBS | Task | Type | Duration | Start | Finish | Predecessors | Total slack | Resources | Work |
| --- | --- | --- | --- | --- | --- | --- | --- | --- | --- | --- |
| 28 | 2 | **Design** |  | 8.25d | 2019-03-06 | 2019-03-18 |  | 0d |  | 190h |
| 29 | 2.1 | Design begins | milestone | 0d | 2019-03-06 | 2019-03-06 | 27 | 0d |  |  |
| 30 | 2.2 | Research Findings Evaluation |  | 1d | 2019-03-06 | 2019-03-07 | 29 | 0d | Jamie Reding; Judy Lew; Maria Hammond; David Barber | 32h |
| 31 | 2.3 | Design Document |  | 2d | 2019-03-07 | 2019-03-11 | 30 | 0d | Jamie Reding; Brenda Diaz | 32h |
| 32 | 2.4 | Proof of Concept |  | 5d | 2019-03-11 | 2019-03-18 | 31 | 0d | Model technician; Maria Hammond; Greg Guzik | 120h |
| 33 | 2.5 | Final Design Selection |  | 2h | 2019-03-18 | 2019-03-18 | 32 | 0d | Frank Zhang; Greg Guzik; Jamie Reding | 6h |
| 34 | 2.6 | Design complete | milestone | 0d | 2019-03-18 | 2019-03-18 | 33 | 0d |  |  |
| 35 | 3 | **Product Development** |  | 26d | 2019-03-18 | 2019-04-23 |  | 0d |  | 796h |
| 36 | 3.1 | Product development begins | milestone | 0d | 2019-03-18 | 2019-03-18 | 34 | 0d |  |  |
| 37 | 3.2 | Initial Prototype |  | 1w | 2019-03-18 | 2019-03-25 | 36 | 0d | Model technician [200%]; Jamie Reding; Jane Clayton | 120h |
| 38 | 3.3 | Internal Testing |  | 2w | 2019-03-25 | 2019-04-08 | 37 | 0d | Maria Hammond; Jim Kim; Model technician; Jamie Reding [25%]; Testing Field | 340h |
| 39 | 3.4 | Raw Materials List |  | 8h | 2019-04-08 | 2019-04-09 | 38 | 0d | Jamie Reding; Eva Corets | 16h |
| 40 | 3.5 | Parts Designation |  | 2w | 2019-04-09 | 2019-04-23 | 39 | 0d | Eva Corets; Jamie Reding; Brad Sutton; Brenda Diaz | 320h |
| 41 | 3.6 | Product development complete | milestone | 0d | 2019-04-23 | 2019-04-23 | 40 | 0d |  |  |
| 42 | 4 | **Production Planning** |  | 9.25d | 2019-04-23 | 2019-05-07 |  | 0d |  | 380h |
| 43 | 4.1 | Production planning begins | milestone | 0d | 2019-04-23 | 2019-04-23 | 41 | 0d |  |  |
| 44 | 4.2 | High-level Production Plan |  | 5d | 2019-04-23 | 2019-04-30 | 43 | 0d | Bjorn Rettig; Eva Corets; Frank Zhang; Jane Clayton; Large Conference Room; Model technician | 240h |
| 45 | 4.3 | Resource Planning |  | 3d | 2019-04-30 | 2019-05-03 | 44 | 0d | Judy Lew; Frank Zhang; Jamie Reding; Eva Corets; Bjorn Rettig | 120h |
| 46 | 4.4 | Quality Control Design |  | 1d | 2019-05-03 | 2019-05-06 | 45 | 0d | Maria Hammond; Jim Kim | 16h |
| 47 | 4.5 | Final Production Plan Approval |  | 2h | 2019-05-06 | 2019-05-07 | 46 | 0d | Judy Lew; Frank Zhang | 4h |
| 48 | 4.6 | Production planning complete | milestone | 0d | 2019-05-07 | 2019-05-07 | 47 | 0d |  |  |
| 49 | 5 | **Marketing** |  | 17d | 2019-05-07 | 2019-05-30 |  | 0d |  | 646.8h |
| 50 | 5.1 | Marketing phase begins | milestone | 0d | 2019-05-07 | 2019-05-07 | 48 | 0d |  |  |
| 51 | 5.2 | Marketing Strategy Development |  | 1d | 2019-05-07 | 2019-05-08 | 50 | 0d | Scott Seely; Brad Sutton; Brenda Diaz | 22.8h |
| 52 | 5.3 | Marketing Plan Development and Approval |  | 1d | 2019-05-08 | 2019-05-09 | 51 | 0d | Frank Zhang; Judy Lew; Ryan Ihrig | 24h |
| 53 | 5.4 | Marketing Materials |  | 3w | 2019-05-09 | 2019-05-30 | 52 | 0d | Jeff Pike; Brenda Diaz; Brad Sutton; Ryan Ihrig; Yan Li | 600h |
| 54 | 5.5 | Marketing phase complete | milestone | 0d | 2019-05-30 | 2019-05-30 | 53 | 0d |  |  |
