# HR Interview Schedule

Schedule from MS Project, 2016-02-15 to 2016-04-21.
P8 LLC

## Calendars

- Standard: Mon-Fri 08:00-12:00, 13:00-17:00; Sat-Sun off.

## Resources

| Resource |
| --- |
| Keith Harris - HR Manager |
| Mu Zheng - Hiring Manager |
| Megan Sherman - Interviewer |

## Schedule

| ID | WBS | Task | Type | Duration | Start | Finish | Predecessors | Total slack | Resources | Work |
| --- | --- | --- | --- | --- | --- | --- | --- | --- | --- | --- |
| 1 | 1 | **Pre-interview Phase** |  | 19d | 2016-02-15 | 2016-03-10 |  | 0d |  | 464h |
| 2 | 1.1 | Begin pre-interview phase | milestone | 0d | 2016-02-15 | 2016-02-15 |  | 0d |  |  |
| 3 | 1.2 | Identify candidate requirements |  | 2d | 2016-02-15 | 2016-02-16 | 2 | 0d | Mu Zheng - Hiring Manager | 16h |
| 4 | 1.3 | Advertise position to internal and external candidates |  | 14ed | 2016-02-16 | 2016-03-01 | 3 | 1.88d | Keith Harris - HR Manager | 336h |
| 5 | 1.4 | Assemble potential candidate applications and resumes |  | 7d | 2016-03-02 | 2016-03-10 | 4 | 0d | Keith Harris - HR Manager; Mu Zheng - Hiring Manager | 112h |
| 6 | 1.5 | Pre-interview phase complete | milestone | 0d | 2016-03-10 | 2016-03-10 | 5 | 0d |  |  |
| 7 | 2 | **Candidate Interview Phase** |  | 15d | 2016-03-10 | 2016-03-31 |  | 0d |  | 272h |
| 8 | 2.1 | Begin interview phase | milestone | 0d | 2016-03-10 | 2016-03-10 | 6 | 0d |  |  |
| 9 | 2.2 | Select candidates to interview |  | 3d | 2016-03-11 | 2016-03-15 | 8 | 0d | Keith Harris - HR Manager; Mu Zheng - Hiring Manager | 48h |
| 10 | 2.3 | Prepare interview questions |  | 3d | 2016-03-16 | 2016-03-18 | 9 | 0d | Mu Zheng - Hiring Manager | 24h |
| 11 | 2.4 | Conduct interview(s) |  | 6d | 2016-03-21 | 2016-03-28 | 10 | 0d | Keith Harris - HR Manager; Mu Zheng - Hiring Manager; Megan Sherman - Interviewer | 144h |
| 12 | 2.5 | Document interview results |  | 2d | 2016-03-29 | 2016-03-30 | 11 | 0d | Keith Harris - HR Manager; Mu Zheng - Hiring Manager; Megan Sherman - Interviewer | 48h |
| 13 | 2.6 | Select final candidates based on interview results |  | 1d | 2016-03-31 | 2016-03-31 | 12 | 0d | Mu Zheng - Hiring Manager | 8h |
| 14 | 2.7 | Interview phase complete | milestone | 0d | 2016-03-31 | 2016-03-31 | 13 | 0d |  |  |
| 15 | 3 | **Candidate Selection Phase** |  | 7d | 2016-03-31 | 2016-04-11 |  | 0d |  | 120h |
| 16 | 3.1 | Begin candidate selection phase | milestone | 0d | 2016-03-31 | 2016-03-31 | 14 | 0d |  |  |
| 17 | 3.2 | Review final candidates |  | 1d | 2016-04-01 | 2016-04-01 | 16 | 0d | Keith Harris - HR Manager; Mu Zheng - Hiring Manager | 16h |
| 18 | 3.3 | Conduct final interviews |  | 3d | 2016-04-04 | 2016-04-06 | 17 | 0d | Keith Harris - HR Manager; Mu Zheng - Hiring Manager; Megan Sherman - Interviewer | 72h |
| 19 | 3.4 | Select best candidate |  | 1d | 2016-04-07 | 2016-04-07 | 18 | 0d | Mu Zheng - Hiring Manager | 8h |
| 20 | 3.5 | Review selection process to assure conformance to HR regulations |  | 1d | 2016-04-08 | 2016-04-08 | 19 | 0d | Mu Zheng - Hiring Manager; Keith Harris - HR Manager | 16h |
| 21 | 3.6 | Complete documentation |  | 1d | 2016-04-11 | 2016-04-11 | 20 | 0d | Mu Zheng - Hiring Manager | 8h |
| 22 | 3.7 | Candidate selection phase complete | milestone | 0d | 2016-04-11 | 2016-04-11 | 21 | 0d |  |  |
| 23 | 4 | **Hiring Phase** |  | 8d | 2016-04-11 | 2016-04-21 |  | 0d |  | 296h |
| 24 | 4.1 | Begin hiring phase | milestone | 0d | 2016-04-11 | 2016-04-11 | 22 | 0d |  |  |
| 25 | 4.2 | Create offer letter |  | 1d | 2016-04-12 | 2016-04-12 | 24 | 0d | Keith Harris - HR Manager | 8h |
| 26 | 4.3 | Negotiate salary |  | 5ed | 2016-04-12 | 2016-04-17 | 25 | 1.88d | Keith Harris - HR Manager; Mu Zheng - Hiring Manager | 240h |
| 27 | 4.4 | Offer accepted |  | 1d | 2016-04-18 | 2016-04-18 | 26 | 0d |  |  |
| 28 | 4.5 | Conduct employee orientation |  | 3d | 2016-04-19 | 2016-04-21 | 27 | 0d | Mu Zheng - Hiring Manager; Keith Harris - HR Manager | 48h |
| 29 | 4.6 | Hiring phase complete | milestone | 0d | 2016-04-21 | 2016-04-21 | 28 | 0d |  |  |
| 30 | 4.7 | Interview Process Complete | milestone | 0d | 2016-04-21 | 2016-04-21 | 29 | 0d |  |  |

Notes:
- 9: Selection process must adhere to company guidelines and Equal Employment Opportunity Committee (EEOC) guidelines.
- 13: Selection process must adhere to company guidelines and Equal Employment Opportunity Committee (EEOC) guidelines.
- 18: Selection process must adhere to company guidelines and Equal Employment Opportunity Committee (EEOC) guidelines.
- 26: Salaries must be commensurate with skills and job grade and in compliance with all company and Equal Employment Opportunity Committee (EEOC) guidelines.
- 28: Employee orientation includes gathering all required information and introducing employee to company policies.
