# Property & Casualty Insurance Claim Processing

Schedule from MS Project, 2019-02-04 to 2019-04-10, status date 2019-03-07, A marks actual dates.
P8 LLC

## Calendars

- Standard: Mon-Fri 08:00-12:00, 13:00-17:00; Sat-Sun off.

## Resources

| Resource | Rate |
| --- | --- |
| Customer |  |
| Chris Cannon |  |
| Mark Hassall |  |
| Mary Baker |  |
| Chris Gray |  |
| Claimant |  |
| Customer/Claimant |  |
| External Claimant |  |
| Kelly Focht | 21 |
| Salvage Yard |  |

## Schedule

| ID | WBS | Task | Type | Duration | Start | Finish | Predecessors | Complete | Remaining | Baseline start | Baseline finish | Baseline duration | Total slack | Resources | Work | Actual work |
| --- | --- | --- | --- | --- | --- | --- | --- | --- | --- | --- | --- | --- | --- | --- | --- | --- |
| 1 | 1 | Read the note for an explanation of the purpose of this template | milestone | 0d | 2019-02-04 08:00 A | 2019-02-04 08:00 A |  | 100% |  | 2019-02-04 08:00 | 2019-02-04 08:00 | 0d |  |  |  |  |
| 2 | 2 | Claim is registered or customer notifies us of potential claim |  | 2h | 2019-02-04 08:00 A | 2019-02-04 10:00 A | 1 | 100% |  | 2019-02-04 08:00 | 2019-02-04 10:00 | 2h |  | Customer; Chris Cannon | 4h | 4h |
| 3 | 3 | **Enter Originating Customer Claim into System** |  | 0.31d | 2019-02-04 10:00 A | 2019-02-04 13:30 A |  | 100% |  | 2019-02-04 10:00 | 2019-02-04 13:30 | 0.31d |  |  | 5h | 5h |
| 4 | 3.1 | Case identifier assigned | milestone | 0d | 2019-02-04 10:00 A | 2019-02-04 10:00 A | 2 | 100% |  | 2019-02-04 10:00 | 2019-02-04 10:00 | 0d |  |  |  |  |
| 5 | 3.2 | Claim information is taken |  | 2h | 2019-02-04 10:00 A | 2019-02-04 12:00 A | 4 | 100% |  | 2019-02-04 10:00 | 2019-02-04 12:00 | 2h |  | Customer; Chris Cannon | 4h | 4h |
| 6 | 3.3 | Claimant is directed to estimator |  | 0.5h | 2019-02-04 13:00 A | 2019-02-04 13:30 A | 5 | 100% |  | 2019-02-04 13:00 | 2019-02-04 13:30 | 0.5h |  | Customer; Chris Cannon | 1h | 1h |
| 7 | 4 | Adjuster is assigned |  | 1d | 2019-02-04 13:30 A | 2019-02-05 13:30 A | 6 | 100% |  | 2019-02-04 13:30 | 2019-02-05 13:30 | 1d |  | Mark Hassall | 8h | 8h |
| 8 | 5 | Adjuster checks "unrepaired damage" history |  | 1h | 2019-02-12 13:30 A | 2019-02-12 14:30 A | 7 | 100% |  | 2019-02-12 13:30 | 2019-02-12 14:30 | 1h |  | Mark Hassall | 1h | 1h |
| 9 | 6 | Customer delivers auto to estimator |  | 2d | 2019-02-12 14:30 A | 2019-02-14 14:30 A | 8 | 100% |  | 2019-02-12 14:30 | 2019-02-14 14:30 | 2d |  | Customer | 16h | 16h |
| 10 | 7 | Estimator reviews damage |  | 2h | 2019-02-14 14:30 A | 2019-02-14 16:30 A | 9 | 100% |  | 2019-02-14 14:30 | 2019-02-14 16:30 | 2h |  | Mary Baker | 2h | 2h |
| 11 | 8 | Estimate reviewed/approved by adjuster |  | 1h | 2019-02-14 16:30 A | 2019-02-15 08:30 A | 10 | 100% |  | 2019-02-14 16:30 | 2019-02-15 08:30 | 1h |  |  |  |  |
| 12 | 9 | **If Estimate Does Not Exceed Deductible** |  | 11.75d | 2019-02-15 08:30 A | 2019-03-04 15:30 A |  | 100% |  | 2019-02-15 08:30 | 2019-03-04 15:30 | 11.75d |  |  | 174.5h | 174.5h |
| 13 | 9.1 | Adjuster suggests possible repair locations |  | 0.5h | 2019-02-15 08:30 A | 2019-02-15 09:00 A | 11 | 100% |  | 2019-02-15 08:30 | 2019-02-15 09:00 | 0.5h |  | Mark Hassall | 0.5h | 0.5h |
| 14 | 9.2 | Claim information and estimate is registered with "unrepaired damage" group |  | 1h | 2019-02-15 09:00 A | 2019-02-15 10:00 A | 13 | 100% |  | 2019-02-15 09:00 | 2019-02-15 10:00 | 1h |  | Mark Hassall | 1h | 1h |
| 15 | 9.3 | **If "Hidden Damage" Is Encountered** |  | 1.5d | 2019-02-15 10:00 A | 2019-02-18 15:00 A |  | 100% |  | 2019-02-15 10:00 | 2019-02-18 15:00 | 1.5d |  |  | 12h | 12h |
| 16 | 9.3.1 | Repairer notifies adjuster |  | 1d | 2019-02-15 10:00 A | 2019-02-18 10:00 A | 14 | 100% |  | 2019-02-15 10:00 | 2019-02-18 10:00 | 1d |  | Chris Gray | 8h | 8h |
| 17 | 9.3.2 | Adjuster determines if new estimate exceeds deductible |  | 0.5d | 2019-02-18 10:00 A | 2019-02-18 15:00 A | 16 | 100% |  | 2019-02-18 10:00 | 2019-02-18 15:00 | 0.5d |  | Mark Hassall | 4h | 4h |
| 18 | 9.4 | Repair performed (and paid for by customer) |  | 10d | 2019-02-18 15:00 A | 2019-03-04 15:00 A | 17 | 100% |  | 2019-02-18 15:00 | 2019-03-04 15:00 | 10d |  | Chris Gray; Mark Hassall | 160h | 160h |
| 19 | 9.5 | Customer notifies us of repairs complete (and amount) |  | 0.5h | 2019-03-04 15:00 A | 2019-03-04 15:30 A | 18 | 100% |  | 2019-03-04 15:00 | 2019-03-04 15:30 | 0.5h |  | Customer; Chris Cannon | 1h | 1h |
| 20 | 9.6 | Customer [Repairs] Complete | milestone | 0d | 2019-03-04 15:30 A | 2019-03-04 15:30 A | 19 | 100% |  | 2019-03-04 15:30 | 2019-03-04 15:30 | 0d |  |  |  |  |
| 21 | 10 | **If Estimate Exceeds Deductible** |  | 14.19d | 2019-03-04 15:00 A | 2019-03-22 16:30 |  | 35% | 9.24d | 2019-03-04 15:00 | 2019-03-22 16:30 | 14.19d | 10.88d |  | 98h | 34h |
| 22 | 10.1 | **If Auto Is Considered "Unrecoverable"** |  | 1d | 2019-03-04 16:00 A | 2019-03-05 16:00 A |  | 100% |  | 2019-03-04 16:00 | 2019-03-05 16:00 | 1d |  |  | 8h | 8h |
| 23 | 10.1.1 | Issue amount (less the deductible) less salvage revenue |  | 1d | 2019-03-04 16:00 A | 2019-03-05 16:00 A | 11, 17 | 100% |  | 2019-03-04 16:00 | 2019-03-05 16:00 | 1d |  | Mark Hassall | 8h | 8h |
| 24 | 10.1.2 | Customer [Repair] closed | milestone | 0d | 2019-03-05 16:00 A | 2019-03-05 16:00 A | 23 | 100% |  | 2019-03-05 16:00 | 2019-03-05 16:00 | 0d |  |  |  |  |

Notes:
- 1: This template walks through the process from the point of view of the insurance company. / It was worked up with an automobile insurance mindset, but the processes for homeowner's insurance are similar. / Terminology: / Customer = The person insured by us (we are the insurance company) / Claimant = The person whose property was damaged by our customer / (Note: This could be an injured party or their legal representation) / Agent = Our local agent or a representative on the claims phone line / Estimator = This can be an internal "drive in claims" office or a body shop or windshield repair specialist / Adjustor = Internal person who manages the claim after an estimation has been performed / Auditor = Member of our internal review - performs random checks / Repairer = Shop performing the repair / Salvage Yard = Pays for unrecoverable vehicles
- 3: This is the customer's originating claim. In a incident involving multiple people, the customer claim may not be reported first, but an incident will be created even if the customer is not the first to report it. Further action cannot occur until the customer is contacted and files a claim.
- 5: Example of information taken: / ·Date of the incident / ·Details of the incident / ·If other parties are involved, their identification information / ·Police report if one was filed or it is available / ·Whether or not the incident involved injury (or potential injury) to any party
- 6: The "Estimator" the Claimant is directed to may be / ·A "drive-in claim" branch of our company / ·An "approved body shop" / ·In the case of windshield repair, an "approved windshield repair shop"
- 9: This may be paid for by insurance as well. This can be by tow truck. / Note: In many cases, the adjuster is the estimator for the insurance company. The body shop will also have an estimator that the adjuster works with.
- 13: The repair locations are just suggestions, as the customer is responsible for all payment obligations.
- 14: An "unrepaired damage company" is usually an external entity that tracks existing claims and repairs in case a subsequent incident(s) occurs before repairs have been completed on the first incident. These firms reconcile the information to ensure that payment isn't made twice for the original damages.
- 17: If new estimate exceeds the deductible (and adjuster concurs) then action continues with "If repair exceeds deductible" line.
- 23: If salvage revenue is received directly by the insurance company, the salvage yard is notified for pickup/purchase and then the issued amount is not reduced by revenues from the salvage sale.

| ID | WBS | Task | Type | Duration | Start | Finish | Predecessors | Complete | Remaining | Baseline start | Baseline finish | Baseline duration | Total slack | Free slack | Resources | Work | Actual work |
| --- | --- | --- | --- | --- | --- | --- | --- | --- | --- | --- | --- | --- | --- | --- | --- | --- | --- |
| 25 | 10.2 | **If Repairs Are Performed (That Exceed the Deductible)** |  | 14.19d | 2019-03-04 15:00 A | 2019-03-22 16:30 |  | 29% | 10.07d | 2019-03-04 15:00 | 2019-03-22 16:30 | 14.19d | 10.88d |  |  | 90h | 26h |
| 26 | 10.2.1 | Repairs performed |  | 10d | 2019-03-04 15:00 A | 2019-03-18 15:00 | 11, 17 | 33% | 6.75d | 2019-03-04 15:00 | 2019-03-18 15:00 | 10d | 10.88d | 0d | Chris Gray | 80h | 26h |
| 27 | 10.2.2 | Customer billed for (and pays) any remainder on the deductible |  | 0.5h | 2019-03-18 15:00 | 2019-03-18 15:30 | 26 |  |  | 2019-03-18 15:00 | 2019-03-18 15:30 | 0.5h | 10.88d | 0d | Chris Gray; Customer | 1h |  |
| 28 | 10.2.3 | Receive repair invoice (from repairer) | milestone | 0d | 2019-03-21 15:30 | 2019-03-21 15:30 | 27FS+3d |  |  | 2019-03-21 15:30 | 2019-03-21 15:30 | 0d | 10.88d | 0d | Mark Hassall |  |  |
| 29 | 10.2.4 | Adjuster approves payment to the repairer |  | 1d | 2019-03-21 15:30 | 2019-03-22 15:30 | 28 |  |  | 2019-03-21 15:30 | 2019-03-22 15:30 | 1d | 10.88d | 0d | Mark Hassall | 8h |  |
| 30 | 10.2.5 | Repair complete information is registered with "unrepaired damage" group |  | 1h | 2019-03-22 15:30 | 2019-03-22 16:30 | 29 |  |  | 2019-03-22 15:30 | 2019-03-22 16:30 | 1h | 10.88d | 0d | Mark Hassall | 1h |  |
| 31 | 10.2.6 | Customer [repair] claim on the incident is closed | milestone | 0d | 2019-03-22 16:30 | 2019-03-22 16:30 | 30 |  |  | 2019-03-22 16:30 | 2019-03-22 16:30 | 0d | 10.88d |  |  |  |  |
| 32 | 11 | **If Claim Involves Injury** |  | 7.12d | 2019-02-04 13:30 A | 2019-02-13 14:30 A |  | 100% |  | 2019-02-04 13:30 | 2019-02-13 14:30 | 7.12d |  |  |  | 9h | 9h |
| 33 | 11.1 | If this is a 'No Fault' state or there is a medical rider, pay up to injury amount |  | 1d | 2019-02-12 14:30 A | 2019-02-13 14:30 A | 2 | 100% |  | 2019-02-12 14:30 | 2019-02-13 14:30 | 1d |  |  | Mark Hassall | 8h | 8h |
| 34 | 11.2 | If "Fault" state, and customer injured external claimant, flag for receipt of potential litigation |  | 1h | 2019-02-04 13:30 A | 2019-02-04 14:30 A | 2 | 100% |  | 2019-02-04 13:30 | 2019-02-04 14:30 | 1h |  |  | Mark Hassall | 1h | 1h |
| 35 | 11.3 | Customer injury claim closed | milestone | 0d | 2019-02-13 14:30 A | 2019-02-13 14:30 A | 33, 34 | 100% |  | 2019-02-13 14:30 | 2019-02-13 14:30 | 0d |  |  |  |  |  |
| 36 | 12 | **For Each Claimant (If Multi-Claimant Incident)** |  | 44.25d | 2019-02-05 13:30 A | 2019-04-08 15:30 |  | 34% | 29.25d | 2019-02-05 13:30 | 2019-04-08 15:30 | 44.25d | 0d |  |  | 220h | 101h |
| 37 | 12.1 | Claimant files claim | milestone | 0d | 2019-02-05 13:30 A | 2019-02-05 13:30 A | 7 | 100% |  | 2019-02-05 13:30 | 2019-02-05 13:30 | 0d |  |  | Claimant |  |  |
| 38 | 12.2 | Adjuster checks "unrepaired damage" history |  | 1h | 2019-02-12 13:30 A | 2019-02-12 14:30 A | 37 | 100% |  | 2019-02-12 13:30 | 2019-02-12 14:30 | 1h |  |  | Mark Hassall | 1h | 1h |
| 39 | 12.3 | Estimator reviews damage |  | 2h | 2019-02-12 14:30 A | 2019-02-12 16:30 A | 38 | 100% |  | 2019-02-12 14:30 | 2019-02-12 16:30 | 2h |  |  | Mary Baker | 2h | 2h |
| 40 | 12.4 | Estimate reviewed by adjuster |  | 1h | 2019-03-04 15:00 A | 2019-03-04 16:00 A | 39 | 100% |  | 2019-03-04 15:00 | 2019-03-04 16:00 | 1h |  |  | Mark Hassall | 1h | 1h |
| 41 | 12.5 | Repair performed |  | 10d | 2019-03-18 15:30 | 2019-04-01 15:30 | 40 |  |  | 2019-03-18 15:30 | 2019-04-01 15:30 | 10d | 0d |  | Chris Gray | 80h |  |
| 42 | 12.6 | Receive repair invoice (from repairer) | milestone | 0d | 2019-04-04 15:30 | 2019-04-04 15:30 | 41FS+3d |  |  | 2019-04-04 15:30 | 2019-04-04 15:30 | 0d | 0d |  | Mark Hassall |  |  |
| 43 | 12.7 | Pay repairer |  | 1d | 2019-04-04 15:30 | 2019-04-05 15:30 | 42 |  |  | 2019-04-04 15:30 | 2019-04-05 15:30 | 1d | 0d |  | Mark Hassall | 8h |  |
| 44 | 12.8 | Finalize incident entry in system |  | 1d | 2019-04-05 15:30 | 2019-04-08 15:30 | 43 |  |  | 2019-04-05 15:30 | 2019-04-08 15:30 | 1d | 0d |  | Mark Hassall | 8h |  |
| 45 | 12.9 | This claimant [repair] claim closed | milestone | 0d | 2019-04-08 15:30 | 2019-04-08 15:30 | 44 |  |  | 2019-04-08 15:30 | 2019-04-08 15:30 | 0d | 0d |  |  |  |  |
| 46 | 12.10 | **If Claim Involves Injury** |  | 25.31d | 2019-02-05 13:30 A | 2019-03-12 16:00 |  | 71% | 7.28d | 2019-02-05 13:30 | 2019-03-12 16:00 | 25.31d | 18.94d |  |  | 120h | 97h |
| 47 | 12.10.1 | Negotiate injury resolution |  | 5d | 2019-02-05 13:30 A | 2019-02-12 13:30 A | 37 | 100% |  | 2019-02-05 13:30 | 2019-02-12 13:30 | 5d |  |  | Mark Hassall; Claimant | 80h | 80h |
| 48 | 12.10.2 | Issue payment |  | 5d | 2019-03-05 16:00 A | 2019-03-12 16:00 | 47 | 43% | 2.88d | 2019-03-05 16:00 | 2019-03-12 16:00 | 5d | 18.94d | 0d | Mark Hassall | 40h | 17h |
| 49 | 12.10.3 | This claimant [injury] claim closed | milestone | 0d | 2019-03-12 16:00 | 2019-03-12 16:00 | 48 |  |  | 2019-03-12 16:00 | 2019-03-12 16:00 | 0d | 18.94d |  |  |  |  |

Notes:
- 29: In the event of "hidden damage" (damage that was not detected when the estimate was generated) it is up to the adjuster and the repairer to negotiate an agreement.
- 33: Customer is also notified of "approved medical facilities." / (Note: There can be potential litigation even in a "No Fault" state if the medical claims exceed the state's price cap on personal injury.)
- 36: Multiple claimants can register against the originating customer incident. / This process and all tasks under it are open until the last claimant submission is complete and closed.
- 43: When the payment goes out is dependent on individual insurance company business practices.
- 45: This does not close any injury claim made.
- 47: Insurance company tries to expedite this, for the longer this delays, the more potential there is for the claimant to involve legal representation. / However, if this exceeds an internal insurance payment threshold, confirmation from doctors representing the insurance company is required and will extend the process.
- 48: Payment is made after the negotiated resolution is signed. This includes legal statements to the effect that this is a "final" resolution.
- 49: The injury claim does not close the incident for this claim unless the repair claim is also closed.

| ID | WBS | Task | Type | Duration | Start | Finish | Predecessors | Baseline start | Baseline finish | Baseline duration | Total slack |
| --- | --- | --- | --- | --- | --- | --- | --- | --- | --- | --- | --- |
| 50 | 13 | **Subrogation Analysis** |  | 1.5d | 2019-04-08 15:30 | 2019-04-10 10:30 |  | 2019-04-08 15:30 | 2019-04-10 10:30 | 1.5d | 0d |
| 51 | 13.1 | Examine the case for applicability of subrogation process |  | 1d | 2019-04-08 15:30 | 2019-04-09 15:30 | 20, 24, 31, 35, 45, 49 | 2019-04-08 15:30 | 2019-04-09 15:30 | 1d | 0d |
| 52 | 13.2 | If subrogation is applicable, initiate subrogation process |  | 4h | 2019-04-09 15:30 | 2019-04-10 10:30 | 51 | 2019-04-09 15:30 | 2019-04-10 10:30 | 4h | 0d |
| 53 | 14 | Incident/Originating Claim Closed | milestone | 0d | 2019-04-10 10:30 | 2019-04-10 10:30 | 52 | 2019-04-10 10:30 | 2019-04-10 10:30 | 0d | 0d |

Notes:
- 50: Subrogation refers to the process an insurance company uses to seek reimbursement from the responsible party (or their insurance company) for a claim it has already paid. / The applicability of subrogation in any individual case depends on the circumstances surrounding the incident, the laws in the applicable state, and the policy provisions. / The insured is obligated to cooperate with the insurance company in the investigation phase of the claim process. This includes helping to establish important facts, preserving evidence, and anything that may be deemed to speed up the recovery process. It is important for the insured not to take any action that may waive rights to recovery. / Also note that there is frequently shared responsibility, (called "comparable negligence," which means that multiple insurance companies may be involved from different aspects. We can be the "initiator" of subrogation and at the same time be the "target" of subrogation.
- 51: In the case of an uninsured party at fault, this may also include ordering a credit report on the party involved to determine if subrogation is even worthwhile.
- 52: This is a whole process. This process is initiated but does not hold up closure of the claim. / The first part of the process is to send a letter of intent to sue for damages to the at-fault party.
