# HR Interview Plan

Schedule from MS Project, 2019-03-18 to 2019-05-21.
P8 LLC

## Calendars

- Standard: Mon-Fri 08:00-12:00, 13:00-17:00; Sat-Sun off.

## Resources

| Resource |
| --- |
| Keith Harris - HR Manager |
| Mu Zheng - Hiring Manager |
| Megan Sherman - Interviewer |

## Schedule

| ID | WBS | Task | Type | Duration | Start | Finish | Predecessors | Total slack | Resources | Work |
| --- | --- | --- | --- | --- | --- | --- | --- | --- | --- | --- |
| 1 | 1 | **HR Interview Plan** |  | 47d | 2019-03-18 | 2019-05-21 |  | 0d |  | 1120h |
| 2 | 1.1 | **Preinterview Phase** |  | 19d | 2019-03-18 | 2019-04-11 |  | 0d |  | 464h |
| 3 | 1.1.1 | Begin preinterview phase | milestone | 0d | 2019-03-18 | 2019-03-18 |  | 0d |  |  |
| 4 | 1.1.2 | Identify candidate requirements |  | 2d | 2019-03-18 | 2019-03-19 | 3 | 0d | Mu Zheng - Hiring Manager | 16h |
| 5 | 1.1.3 | Advertise position to internal and external candidates |  | 14ed | 2019-03-19 | 2019-04-02 | 4 | 1.88d | Keith Harris - HR Manager | 336h |
| 6 | 1.1.4 | Assemble potential candidate applications and resumes |  | 7d | 2019-04-03 | 2019-04-11 | 5 | 0d | Keith Harris - HR Manager; Mu Zheng - Hiring Manager | 112h |
| 7 | 1.1.5 | Preinterview phase complete | milestone | 0d | 2019-04-11 | 2019-04-11 | 6 | 0d |  |  |
| 8 | 1.2 | **Candidate Interview Phase** |  | 13d | 2019-04-11 | 2019-04-30 |  | 0d |  | 240h |
| 9 | 1.2.1 | Begin interview phase | milestone | 0d | 2019-04-11 | 2019-04-11 | 7 | 0d |  |  |
| 10 | 1.2.2 | Select candidates to interview |  | 3d | 2019-04-12 | 2019-04-16 | 9 | 0d | Keith Harris - HR Manager; Mu Zheng - Hiring Manager | 48h |
| 11 | 1.2.3 | Prepare interview questions |  | 2d | 2019-04-17 | 2019-04-18 | 10 | 0d | Mu Zheng - Hiring Manager | 16h |
| 12 | 1.2.4 | Conduct interview(s) |  | 5d | 2019-04-19 | 2019-04-25 | 11 | 0d | Keith Harris - HR Manager; Mu Zheng - Hiring Manager; Megan Sherman - Interviewer | 120h |
| 13 | 1.2.5 | Document interview results |  | 2d | 2019-04-26 | 2019-04-29 | 12 | 0d | Keith Harris - HR Manager; Mu Zheng - Hiring Manager; Megan Sherman - Interviewer | 48h |
| 14 | 1.2.6 | Select final candidates based on interview results |  | 1d | 2019-04-30 | 2019-04-30 | 13 | 0d | Mu Zheng - Hiring Manager | 8h |
| 15 | 1.2.7 | Interview phase complete | milestone | 0d | 2019-04-30 | 2019-04-30 | 14 | 0d |  |  |
| 16 | 1.3 | **Candidate Selection Phase** |  | 7d | 2019-04-30 | 2019-05-09 |  | 0d |  | 120h |
| 17 | 1.3.1 | Begin candidate selection phase | milestone | 0d | 2019-04-30 | 2019-04-30 | 15 | 0d |  |  |
| 18 | 1.3.2 | Review final candidates |  | 1d | 2019-05-01 | 2019-05-01 | 17 | 0d | Keith Harris - HR Manager; Mu Zheng - Hiring Manager | 16h |
| 19 | 1.3.3 | Conduct final interviews |  | 3d | 2019-05-02 | 2019-05-06 | 18 | 0d | Keith Harris - HR Manager; Mu Zheng - Hiring Manager; Megan Sherman - Interviewer | 72h |
| 20 | 1.3.4 | Select best candidate |  | 1d | 2019-05-07 | 2019-05-07 | 19 | 0d | Mu Zheng - Hiring Manager | 8h |
| 21 | 1.3.5 | Review selection process to assure conformance to HR regulations |  | 1d | 2019-05-08 | 2019-05-08 | 20 | 0d | Mu Zheng - Hiring Manager; Keith Harris - HR Manager | 16h |
| 22 | 1.3.6 | Complete documentation |  | 1d | 2019-05-09 | 2019-05-09 | 21 | 0d | Mu Zheng - Hiring Manager | 8h |
| 23 | 1.3.7 | Candidate selection phase complete | milestone | 0d | 2019-05-09 | 2019-05-09 | 22 | 0d |  |  |
| 24 | 1.4 | **Hiring Phase** |  | 8d | 2019-05-09 | 2019-05-21 |  | 0d |  | 296h |
| 25 | 1.4.1 | Begin hiring phase | milestone | 0d | 2019-05-09 | 2019-05-09 | 23 | 0d |  |  |
| 26 | 1.4.2 | Create offer letter |  | 1d | 2019-05-10 | 2019-05-10 | 25 | 0d | Keith Harris - HR Manager | 8h |
| 27 | 1.4.3 | Negotiate salary |  | 5ed | 2019-05-10 | 2019-05-15 | 26 | 1.88d | Keith Harris - HR Manager; Mu Zheng - Hiring Manager | 240h |
| 28 | 1.4.4 | Offer accepted |  | 1d | 2019-05-16 | 2019-05-16 | 27 | 0d |  |  |
| 29 | 1.4.5 | Conduct employee orientation |  | 3d | 2019-05-17 | 2019-05-21 | 28 | 0d | Mu Zheng - Hiring Manager; Keith Harris - HR Manager | 48h |
| 30 | 1.4.6 | Hiring phase complete | milestone | 0d | 2019-05-21 | 2019-05-21 | 29 | 0d |  |  |
| 31 | 1.5 | Interview Process Complete | milestone | 0d | 2019-05-21 | 2019-05-21 | 30 | 0d |  |  |

Notes:
- 10: Selection process must adhere to company guidelines and Equal Employment Opportunity Committee (EEOC) guidelines.
- 14: Selection process must adhere to company guidelines and Equal Employment Opportunity Committee (EEOC) guidelines.
- 19: Selection process must adhere to company guidelines and Equal Employment Opportunity Committee (EEOC) guidelines.
- 27: Salaries must be commensurate with skills and job grade and in compliance with all company and Equal Employment Opportunity Committee (EEOC) guidelines.
- 29: Employee orientation includes gathering all required information and introducing employee to company policies.
